Schedule from a web Gantt chart, 2024-12-05 to 2024-12-28.
Sundays are off

## Schedule

| ID | WBS | Task | Duration | Start | Finish | Complete | inPeople | Status |
| --- | --- | --- | --- | --- | --- | --- | --- | --- |
| 2 | 1 | 项目确认会议 | 1d | 2024-12-05 | 2024-12-05 | 100% | 张杰、毕京城、肖同新、李广禄、刘杰、李云鹏 |  |
| 3 | 2 | **部门内部准备** | 6d | 2024-12-06 | 2024-12-12 | 100% |  |  |
| 4 | 2.1 | **财务部信息化组** | 5d | 2024-12-06 | 2024-12-11 | 100% | 财务部信息化项目组 |  |
| 5 | 2.1.1 | 测试环境任务配置与角色权限管理 | 1d | 2024-12-06 | 2024-12-06 | 100% | 李云鹏 |  |
| 6 | 2.1.2 | 设备巡检模块功能修改 | 2d | 2024-12-09 | 2024-12-10 | 100% | 李志浩 |  |
| 7 | 2.1.3 | 设备报修模块功能修改 | 1d | 2024-12-11 | 2024-12-11 | 100% | 李志浩 |  |
| 8 | 2.1.4 | 设备技术协议及说明书上传 | 1d | 2024-12-11 | 2024-12-11 | 100% | 李云鹏 |  |
| 9 | 2.1.5 | 几条测试数据维护 | 1d | 2024-12-11 | 2024-12-11 | 100% | 李云鹏 |  |
| 10 | 2.2 | **机动部** | 6d | 2024-12-06 | 2024-12-12 | 100% | 机动部 |  |
| 11 | 2.2.1 | 设备分类与编码规则 | 5d | 2024-12-06 | 2024-12-11 | 100% | 机动部 | suspended |
| 12 | 2.2.2 | 测试服设备与检验方案维护 | 1d | 2024-12-12 | 2024-12-12 | 100% | 机动部、各车间设备管理员 |  |
| 13 | 3 | 系统测试环境使用 | 4d | 2024-12-13 | 2024-12-17 | 100% | 机动部、李云鹏 |  |
| 14 | 4 | 测试环境上线问题反馈汇总与改进 | 1d | 2024-12-17 | 2024-12-17 | 100% | 刘杰、李志浩、陈士吉、李云鹏 |  |
| 15 | 5 | 功能优化及重新测试 | 2d | 2024-12-17 | 2024-12-18 | 100% | 刘杰、陈士吉、李云鹏 |  |
| 16 | 6 | 系统培训会议 | 1d | 2024-12-24 | 2024-12-24 |  | 各车间设备管理员、刘杰、李云鹏 |  |
| 17 | 7 | **功能模块上线正式生产环境** | 12d | 2024-12-16 | 2024-12-28 | 29% | 各车间、机动部、财务部信息化组 | suspended |
| 18 | 7.1 | 正式环境小程序、分类等配置 | 3d | 2024-12-16 | 2024-12-18 | 100% | 财务部信息化项目组 | suspended |
| 19 | 7.2 | 正式环境期初数据准备与导入 | 6d | 2024-12-16 | 2024-12-21 | 40% | 刘杰、邢文震、李云鹏 | suspended |
| 20 | 7.3 | 正式环境设备管理运行维护、问题处理 | 10d | 2024-12-18 | 2024-12-28 |  | 各车间设备管理员、机动部、财务部信息化项目组 | suspended |
| 21 | 8 | 异常数据分析、制定相应考核标准 | 3d | 2024-12-26 | 2024-12-28 |  | 机动部、财务部信息化项目组 |  |

Notes:
- 2: 1、功能需求确认；2、功能培训
- 6: 设备管理方案绑定巡检周期、巡检时一次性和周期性
- 7: 设备报修-维修时领用备件绑定备件领用单
- 8: 设备档案加上设备技术协议、设备说明书
- 9: 部门内部测试
- 11: 明确、制定及维护设备分类与设备编码规则;已有
- 12: 维护测试服设备管理功能模块设备台账、设备检验方案。
- 13: 系统测试环境上线使用;
- 14: 20241217：设备点检、巡检制定规则确定。
- 16: 机动部、各车间的系统操作培训；该项需后置。
